# IST645F18A2BBadheV

Schedule from MS Project, 2018-09-11 to 2019-06-18, 5 hours a day, costs in $.

## Calendars

- Standard: Mon-Fri 08:00-12:00, 13:00-17:00; Sat-Sun off. Exceptions (off unless hours are given): 2018-11-19 to 2018-11-25 (Thanksgiving), 2018-12-25 (Christmas).

## Resources

| Resource | Rate |
| --- | --- |
| Vidisha Badhe | 61 |
| Robert T. Murray | 45 |
| Karen Watson | 37.5 |
| Stephanie Lewis | 40 |
| James Sanduzi | 56 |
| Philip Grome | 62.5 |
| Mary Garcia | 59 |
| Initial Contract Payment | 17500 |
| Second Contract Payment | 12500 |
| Third Contract Payment | 17000 |
| Final Contract Payment | 32500 |
| Monthly Licence fees | 2300 |
| Javier Pareja |  |
| Piro Hernandez |  |
| Apurv Khanna |  |
| Angela R. Berry |  |
| Nikki Platenik |  |
| Susan Levy |  |
| Cynthia Wong |  |
| Thomas V. Dugas |  |

## Schedule

| ID | WBS | Task | Duration | Start | Finish | Predecessors | Total slack | Resources | Work | Cost |
| --- | --- | --- | --- | --- | --- | --- | --- | --- | --- | --- |
| 1 | 1 | **Project Initiation** | 23.03d | 2018-09-11 | 2018-10-01 |  | 0d |  | 127h | 5,093.5 |
| 2 | 1.1 | **Meeting with Susan Levy & Javier Pareja** | 5.67d | 2018-09-11 | 2018-09-14 |  | 0d |  | 35h | 610 |
| 3 | 1.1.1 | Gathering the visions & missions from Javier Pareja for the Project development | 2d | 2018-09-11 | 2018-09-12 |  | 0d | Vidisha Badhe | 10h | 610 |
| 4 | 1.1.2 | Identifying the key stakeholders | 1.67d | 2018-09-13 | 2018-09-14 | 3FS+2d | 0d | Javier Pareja; Piro Hernandez; Susan Levy | 25h |  |
| 5 | 1.2 | **Identifying the Project Team** | 3d | 2018-09-18 | 2018-09-19 |  | 0d |  | 15h | 915 |
| 6 | 1.2.1 | Selecting members from World Hotels Information Technology department | 2d | 2018-09-18 | 2018-09-19 | 4FS+2d | 0d | Vidisha Badhe | 10h | 610 |
| 7 | 1.2.2 | Providing the team members with the general purpose & mission of the Project | 1d | 2018-09-19 | 2018-09-19 | 6 | 0d | Vidisha Badhe | 5h | 305 |
| 8 | 1.3 | **Scheduling meeting with the stakeholders** | 8d | 2018-09-19 | 2018-09-26 |  | 0d |  | 40h | 2,440 |
| 9 | 1.3.1 | Proposing the Project to the stakeholders | 1d | 2018-09-19 | 2018-09-20 | 7 | 0d | Vidisha Badhe | 5h | 305 |
| 10 | 1.3.2 | Getting Stakeholder views & approval | 4d | 2018-09-20 | 2018-09-25 | 9 | 0d | Vidisha Badhe | 20h | 1,220 |
| 11 | 1.3.3 | Preparing a rough purpose document | 3d | 2018-09-25 | 2018-09-26 | 10 | 0d | Vidisha Badhe | 15h | 915 |
| 12 | 1.4 | **Deliverable: Creating the Project Charter** | 4.37d | 2018-09-26 | 2018-10-01 |  | 0d |  | 37h | 1,128.5 |
| 13 | 1.4.1 | **Meeting with Susan Levy** | 1.3d | 2018-09-26 | 2018-09-27 |  | 0d |  | 9h | 396.5 |
| 14 | 1.4.1.1 | Discussing the availability & time for meeting to discuss the initial requirements | 0.5d | 2018-09-26 | 2018-09-27 | 11 | 0d | Susan Levy; Vidisha Badhe | 5h | 152.5 |
| 15 | 1.4.1.2 | Requesting Piro Hernandez & Javier Pareja for a meeting | 0.8d | 2018-09-27 | 2018-09-27 | 14 | 0d | Vidisha Badhe | 4h | 244 |
| 16 | 1.4.2 | **Meeting to discuss the requirements** | 0.2d | 2018-09-27 | 2018-09-27 |  | 0d |  | 4h | 61 |
| 17 | 1.4.2.1 | Discussing the high-level requirements with Javier Pareja, Piro Hernandez, Susan Levy | 0.2d | 2018-09-27 | 2018-09-27 | 15 | 0d | Javier Pareja; Piro Hernandez; Susan Levy; Vidisha Badhe | 4h | 61 |
| 18 | 1.4.3 | Developing the Project Charter | 2d | 2018-09-27 | 2018-10-01 | 16 | 0d | Vidisha Badhe | 10h | 610 |
| 19 | 1.4.4 | Project charter review by Piro Hernandez, Javier Pareja, Susan Levy | 0.67d | 2018-10-01 | 2018-10-01 | 18 | 0d | Javier Pareja; Piro Hernandez; Susan Levy | 10h |  |
| 20 | 1.4.5 | Signing off the Project Charter | 0.2d | 2018-10-01 | 2018-10-01 | 19 | 0d | Javier Pareja; Piro Hernandez; Susan Levy; Vidisha Badhe | 4h | 61 |
| 21 | 2 | **Initial Project planning** | 24d | 2018-10-01 | 2018-10-22 |  | 0d |  | 171h | 5,496.75 |
| 22 | 2.1 | **Deliverable: Preparing the Executive Overview Presentation** | 11.5d | 2018-10-01 | 2018-10-10 |  | 0d |  | 40h | 1,342 |
| 23 | 2.1.1 | **Meeting with Nikki Platenik** | 2d | 2018-10-01 | 2018-10-02 |  | 0d |  | 20h | 610 |
| 24 | 2.1.1.1 | Collecting information about meeting amenities, conferences at Royal Park hotels | 1d | 2018-10-01 | 2018-10-02 | 20 | 0d | Nikki Platenik; Vidisha Badhe | 10h | 305 |
| 25 | 2.1.1.2 | Discussing the plan for project prototyping at Royal Park Hotel | 1d | 2018-10-02 | 2018-10-02 | 24 | 0d | Nikki Platenik; Vidisha Badhe | 10h | 305 |
| 26 | 2.1.2 | Creating the presentation for Board/Industry Advisory meeting | 2d | 2018-10-08 | 2018-10-09 | 25FS+5d | 0d | Vidisha Badhe | 10h | 610 |
| 27 | 2.1.3 | Sharing the presentation with Susan Levy | 0.2d | 2018-10-09 | 2018-10-10 | 26FS+1d | 0d | Vidisha Badhe | 1h | 61 |
| 28 | 2.1.4 | Review of Presentation by Susan Levy & Javier Pareja | 0.5d | 2018-10-10 | 2018-10-10 | 27 | 0d | Javier Pareja; Susan Levy | 5h |  |
| 29 | 2.1.5 | Handing over the Presentation to Piro Hernandez | 0.2d | 2018-10-10 | 2018-10-10 | 28 | 0d | Vidisha Badhe | 1h | 61 |
| 30 | 2.1.6 | Getting final approval for the presentation from Piro Hernandez | 0.6d | 2018-10-10 | 2018-10-10 | 29 | 0d | Piro Hernandez | 3h |  |

| ID | WBS | Task | Duration | Start | Finish | Predecessors | Total slack | Free slack | Resources | Work | Cost |
| --- | --- | --- | --- | --- | --- | --- | --- | --- | --- | --- | --- |
| 31 | 2.2 | **Board/Industry Advisory meeting** | 1.2d | 2018-10-10 | 2018-10-11 |  | 0d |  |  | 27h | 427 |
| 32 | 2.2.1 | Discussing the Overview of the project | 0.6d | 2018-10-10 | 2018-10-11 | 22 | 15.26d |  | Vidisha Badhe | 3h | 183 |
| 33 | 2.2.2 | Discussing the RPA Technologies involved | 0.2d | 2018-10-10 | 2018-10-10 | 22 | 15.66d |  | Vidisha Badhe | 1h | 61 |
| 34 | 2.2.3 | Explaining the vision of the Project | 0.4d | 2018-10-10 | 2018-10-11 | 22 | 15.46d |  | Vidisha Badhe | 2h | 122 |
| 35 | 2.2.4 | Discussing the roles of the executives, experts | 0.2d | 2018-10-10 | 2018-10-10 | 22 | 0d |  | Vidisha Badhe | 1h | 61 |
| 36 | 2.2.5 | Gathering the views & opinions from the executives regarding the project | 1d | 2018-10-10 | 2018-10-11 | 35 | 0d |  | Angela R. Berry; Apurv Khanna; Javier Pareja; Thomas V. Dugas | 20h |  |
| 37 | 2.3 | **Request for meeting with Piro Hernandez & Javier Pareja** | 3.5d | 2018-10-11 | 2018-10-15 |  | 0d |  |  | 45h | 1,653.75 |
| 38 | 2.3.1 | **Schedule the meeting for budget & project plan** | 3.5d | 2018-10-11 | 2018-10-15 |  | 0d |  |  | 45h | 1,653.75 |
| 39 | 2.3.1.1 | Discussing the initial costs, budget of World Hotels with Susan Levy & Piro Hernandez | 1.5d | 2018-10-11 | 2018-10-12 | 31 | 0d |  | Piro Hernandez; Susan Levy; Vidisha Badhe; Karen Watson | 30h | 738.75 |
| 40 | 2.3.1.2 | Deliverable: Developing the initial project completion plan | 2d | 2018-10-12 | 2018-10-15 | 39 | 0d |  | Vidisha Badhe | 10h | 610 |
| 41 | 2.3.1.3 | Deliverable: Developing the Budget plan | 1d | 2018-10-12 | 2018-10-15 | 39 | 15.66d | 1d | Vidisha Badhe | 5h | 305 |
| 42 | 2.4 | **Board of Directors meeting** | 2d | 2018-10-15 | 2018-10-17 |  | 0d |  |  | 10h | 610 |
| 43 | 2.4.1 | Discussing the financial details about the project such as cost of resources, liscences | 1d | 2018-10-15 | 2018-10-16 | 40, 41 | 0d |  | Vidisha Badhe | 5h | 305 |
| 44 | 2.4.2 | Getting approvals from the Board of Directors for further project implementation | 1d | 2018-10-16 | 2018-10-17 | 43 | 0d |  | Vidisha Badhe | 5h | 305 |
| 45 | 2.5 | **Preparing the contract with Blue Prism** | 5.8d | 2018-10-17 | 2018-10-22 |  | 0d |  |  | 49h | 1,464 |
| 46 | 2.5.1 | **Meeting of Blue Prism & World Hotels** | 5.8d | 2018-10-17 | 2018-10-22 |  | 0d |  |  | 49h | 1,464 |
| 47 | 2.5.1.1 | Discussing the terms & conditions, exceptions, budgets, costs of the contract | 0.8d | 2018-10-17 | 2018-10-17 | 44 | 0d |  | Vidisha Badhe | 4h | 244 |
| 48 | 2.5.1.2 | Creating the contract document | 3d | 2018-10-17 | 2018-10-19 | 47 | 0d |  | Vidisha Badhe | 15h | 915 |
| 49 | 2.5.1.3 | Reviewing the Contract by all the stakeholders & executives | 1d | 2018-10-19 | 2018-10-22 | 48 | 0d |  | Javier Pareja; Piro Hernandez | 10h |  |
| 50 | 2.5.1.4 | Signing the contract by World Hotels & Blue Prism executives | 1d | 2018-10-22 | 2018-10-22 | 49 | 0d |  | Angela R. Berry; Javier Pareja; Piro Hernandez; Vidisha Badhe | 20h | 305 |
| 51 | 3 | First contract payment to Blue Prism | 0.2d | 2018-10-22 | 2018-10-22 | 50 | 0d |  | Initial Contract Payment |  | 17,500 |
| 52 | 4 | **Planning requirements** | 29.3d | 2018-10-22 | 2018-11-16 |  | 0d |  |  | 264h | 7,187.83 |
| 53 | 4.1 | Identifying the key deliverables to be prepared | 1.33d | 2018-10-22 | 2018-10-23 | 51 | 0d |  | Javier Pareja; Piro Hernandez; Vidisha Badhe | 20h | 406.67 |
| 54 | 4.2 | **Software acquisition for Robotic Process Automation** | 2.2d | 2018-10-23 | 2018-10-24 |  | 0d |  |  | 28h | 488 |
| 55 | 4.2.1 | **Conducting meeting with Angela R. Berry** | 1.2d | 2018-10-23 | 2018-10-24 |  | 0d |  |  | 13h | 488 |
| 56 | 4.2.1.1 | Discussing the cost of software | 0.6d | 2018-10-23 | 2018-10-23 | 53 | 0d |  | Angela R. Berry; Vidisha Badhe | 6h | 183 |
| 57 | 4.2.1.2 | Discussing the terms & Conditions of the software Licence agreement | 0.4d | 2018-10-23 | 2018-10-23 | 53 | 0.2d |  | Angela R. Berry; Vidisha Badhe | 4h | 122 |
| 58 | 4.2.1.3 | Creating the initial agreement | 0.6d | 2018-10-23 | 2018-10-24 | 56, 57 | 0d |  | Vidisha Badhe | 3h | 183 |
| 59 | 4.2.2 | Review of licence agreement by all the stakeholders | 0.67d | 2018-10-24 | 2018-10-24 | 58 | 0d |  | Javier Pareja; Piro Hernandez; Susan Levy | 10h |  |
| 60 | 4.2.3 | Getting approval from the stakeholders | 0.33d | 2018-10-24 | 2018-10-24 | 59 | 0d |  | Javier Pareja; Piro Hernandez; Susan Levy | 5h |  |

| ID | WBS | Task | Duration | Start | Finish | Predecessors | Total slack | Resources | Work | Cost |
| --- | --- | --- | --- | --- | --- | --- | --- | --- | --- | --- |
| 61 | 4.3 | **Defining Scope** | 12.73d | 2018-10-24 | 2018-11-05 |  | 0d |  | 102h | 2,989 |
| 62 | 4.3.1 | **Studying World Hotels systems** | 6d | 2018-10-24 | 2018-10-30 |  | 0d |  | 30h | 1,830 |
| 63 | 4.3.1.1 | Looking up the Internal Audit system for its results | 1d | 2018-10-24 | 2018-10-25 | 60 | 0d | Vidisha Badhe | 5h | 305 |
| 64 | 4.3.1.2 | Collecting feedbacks from the customers at World Hotels for knowing the demand | 2d | 2018-10-25 | 2018-10-26 | 63 | 0d | Vidisha Badhe | 10h | 610 |
| 65 | 4.3.1.3 | Contacting individual hotels for their feedbacks | 2d | 2018-10-26 | 2018-10-30 | 64 | 0d | Vidisha Badhe | 10h | 610 |
| 66 | 4.3.1.4 | Studying the current systems used at World Hotels & their functionality | 1d | 2018-10-30 | 2018-10-30 | 65 | 0d | Vidisha Badhe | 5h | 305 |
| 67 | 4.3.2 | **Meeting with Apurv Khanna** | 1.2d | 2018-10-30 | 2018-10-31 |  | 0d |  | 12h | 366 |
| 68 | 4.3.2.1 | Discussing the complexity of RPA processes | 0.7d | 2018-10-30 | 2018-10-31 | 66 | 0d | Apurv Khanna; Vidisha Badhe | 7h | 213.5 |
| 69 | 4.3.2.2 | Discussing the compatability of RPA processes with other systems | 0.2d | 2018-10-31 | 2018-10-31 | 68 | 0d | Apurv Khanna; Vidisha Badhe | 2h | 61 |
| 70 | 4.3.2.3 | Identifying the potential challenges | 0.3d | 2018-10-31 | 2018-10-31 | 69 | 0d | Apurv Khanna; Vidisha Badhe | 3h | 91.5 |
| 71 | 4.3.3 | **Meeting with Thomas V. Dugas** | 0.6d | 2018-10-31 | 2018-10-31 |  | 0d |  | 6h | 183 |
| 72 | 4.3.3.1 | Discussing the current demand of RPA technology in the market | 0.4d | 2018-10-31 | 2018-10-31 | 70 | 0d | Thomas V. Dugas; Vidisha Badhe | 4h | 122 |
| 73 | 4.3.3.2 | Identifying the future outcomes by studying the market trends | 0.2d | 2018-10-31 | 2018-10-31 | 72 | 0d | Thomas V. Dugas; Vidisha Badhe | 2h | 61 |
| 74 | 4.3.4 | Documenting the initial Scope & Objectives of the Project | 1d | 2018-10-31 | 2018-11-01 | 62, 67, 71 | 0d | Vidisha Badhe | 5h | 305 |
| 75 | 4.3.5 | Deliverable: Creating the Project Scope Document | 1d | 2018-11-01 | 2018-11-02 | 74 | 0d | Vidisha Badhe | 5h | 305 |
| 76 | 4.3.6 | Review of the Scope Document by all the Stakeholders | 1d | 2018-11-02 | 2018-11-02 | 75 | 0d | Javier Pareja; Piro Hernandez; Susan Levy | 15h |  |
| 77 | 4.3.7 | Getting approval for the Scope Document | 1.93d | 2018-11-02 | 2018-11-05 | 76 | 0d | Javier Pareja; Piro Hernandez; Susan Levy | 29h |  |
| 78 | 4.4 | **Defining risks** | 5.87d | 2018-11-05 | 2018-11-09 |  | 0d |  | 68h | 1,382.67 |
| 79 | 4.4.1 | **Scheduling meeting with World Hotel executives & Thomas V. Dugas** | 2.53d | 2018-11-05 | 2018-11-07 |  | 0d |  | 38h | 772.67 |
| 80 | 4.4.1.1 | Discussing the risks encountered previously during the Internal Hotel Audit automation project | 0.8d | 2018-11-05 | 2018-11-06 | 77 | 0d | Susan Levy; Thomas V. Dugas; Vidisha Badhe | 12h | 244 |
| 81 | 4.4.1.2 | Discussing the market risks involved with implementing the RPA technology | 1.2d | 2018-11-06 | 2018-11-07 | 80 | 0d | Susan Levy; Thomas V. Dugas; Vidisha Badhe | 18h | 366 |
| 82 | 4.4.1.3 | Discussing the risks associated with resources: availability of resource at all times, human error | 0.53d | 2018-11-07 | 2018-11-07 | 81 | 0d | Susan Levy; Thomas V. Dugas; Vidisha Badhe | 8h | 162.67 |
| 83 | 4.4.2 | Deliverable: Generating the risk document | 1d | 2018-11-07 | 2018-11-08 | 79 | 0d | Vidisha Badhe | 5h | 305 |
| 84 | 4.4.3 | Review of risk document by all the stakeholders & executives | 1.33d | 2018-11-08 | 2018-11-08 | 83 | 0d | Angela R. Berry; Javier Pareja; Piro Hernandez | 20h |  |
| 85 | 4.4.4 | Getting approval for the risk document | 1d | 2018-11-08 | 2018-11-09 | 84 | 0d | Vidisha Badhe | 5h | 305 |

| ID | WBS | Task | Duration | Start | Finish | Predecessors | Total slack | Resources | Work | Cost |
| --- | --- | --- | --- | --- | --- | --- | --- | --- | --- | --- |
| 86 | 4.5 | **Defining schedule** | 3.63d | 2018-11-09 | 2018-11-13 |  | 0d |  | 23h | 945.5 |
| 87 | 4.5.1 | Analyzing the complexity of the tasks to be performed | 0.6d | 2018-11-09 | 2018-11-09 | 85 | 0d | Vidisha Badhe | 3h | 183 |
| 88 | 4.5.2 | Analyzing the resource availability | 0.4d | 2018-11-09 | 2018-11-12 | 87 | 0d | Vidisha Badhe | 2h | 122 |
| 89 | 4.5.3 | Discussing technological challenges if any with Cynthia Wong | 0.5d | 2018-11-12 | 2018-11-12 | 88 | 0d | Vidisha Badhe; Cynthia Wong | 4h | 91.5 |
| 90 | 4.5.4 | Deliverable: Creating the Schedule document | 0.8d | 2018-11-12 | 2018-11-13 | 87, 88, 89 | 0d | Vidisha Badhe | 4h | 244 |
| 91 | 4.5.5 | Review of schedule document by all the stakeholders & executives | 0.33d | 2018-11-13 | 2018-11-13 | 90 | 0d | Angela R. Berry; Javier Pareja; Piro Hernandez | 5h |  |
| 92 | 4.5.6 | Getting approval for schedule document | 1d | 2018-11-13 | 2018-11-13 | 91 | 0d | Vidisha Badhe | 5h | 305 |
| 93 | 4.6 | **Deliverable: Project Technical Document** | 3.53d | 2018-11-13 | 2018-11-16 |  | 0d |  | 23h | 976 |
| 94 | 4.6.1 | **Meeting with Blue Prism team** | 1.6d | 2018-11-13 | 2018-11-14 |  | 0d |  | 10h | 488 |
| 95 | 4.6.1.1 | Giving the detailed design requirements to Blue Prism | 0.6d | 2018-11-13 | 2018-11-14 | 92 | 0d | Vidisha Badhe | 3h | 183 |
| 96 | 4.6.1.2 | Discussing the feasibility of the proposed requirements | 0.6d | 2018-11-14 | 2018-11-14 | 95 | 0d | Vidisha Badhe | 3h | 183 |
| 97 | 4.6.1.3 | Discussing the specific automation tasks with Apurv Khanna | 0.4d | 2018-11-14 | 2018-11-14 | 96 | 0d | Apurv Khanna; Vidisha Badhe | 4h | 122 |
| 98 | 4.6.2 | Preparing a Technical document which includes the detailed overall design for each deliverable | 0.6d | 2018-11-14 | 2018-11-15 | 97 | 0d | Vidisha Badhe | 3h | 183 |
| 99 | 4.6.3 | Review of the Technical document by all the Stakeholders & executives at World Hotels & Blue Prism | 0.33d | 2018-11-15 | 2018-11-15 | 98 | 0d | Angela R. Berry; Javier Pareja; Piro Hernandez | 5h |  |
| 100 | 4.6.4 | Getting approval for Technical document | 1d | 2018-11-15 | 2018-11-16 | 99 | 0d | Vidisha Badhe | 5h | 305 |
| 101 | 5 | **Project Management plan** | 3.4d | 2018-11-16 | 2018-11-27 |  | 0d |  | 42h | 1,998.75 |
| 102 | 5.1 | **Implementing change control** | 2.63d | 2018-11-16 | 2018-11-26 |  | 0d |  | 29h | 1,764.92 |
| 103 | 5.1.1 | Maintaining a track of issues and resolutions on daily basis during the implementation phase | 1.53d | 2018-11-16 | 2018-11-26 | 100 | 0d | Mary Garcia; Philip Grome; Vidisha Badhe | 23h | 1,399.17 |
| 104 | 5.1.2 | Creating issue forms for service requests | 0.1d | 2018-11-26 | 2018-11-26 | 103 | 0d | Mary Garcia; Philip Grome | 1h | 60.75 |
| 105 | 5.1.3 | Tracking the service requests | 0.6d | 2018-11-26 | 2018-11-26 | 104 | 0d | Vidisha Badhe | 3h | 183 |
| 106 | 5.1.4 | Deliverable: Creating change control document | 0.4d | 2018-11-26 | 2018-11-26 | 105 | 0d | Vidisha Badhe | 2h | 122 |
| 107 | 5.2 | **Communication management plan** | 0.77d | 2018-11-26 | 2018-11-27 |  | 0d |  | 13h | 233.83 |
| 108 | 5.2.1 | Conducting daily progress meetings with the team | 0.2d | 2018-11-26 | 2018-11-26 | 106 | 0d | Vidisha Badhe | 1h | 61 |
| 109 | 5.2.2 | **Meetings with stakeholders & Blue Prism executives** | 0.57d | 2018-11-26 | 2018-11-27 |  | 0d |  | 12h | 172.83 |
| 110 | 5.2.2.1 | Discussing the progress of the tasks with stakeholders | 0.2d | 2018-11-26 | 2018-11-26 | 108 | 0d | Angela R. Berry; Javier Pareja; Piro Hernandez; Susan Levy; Thomas V. Dugas; Vidisha Badhe | 6h | 61 |
| 111 | 5.2.2.2 | Discussing the feasibility of changes requested by the change control forms | 0.07d | 2018-11-26 | 2018-11-27 | 110 | 0d | Angela R. Berry; Javier Pareja; Piro Hernandez; Susan Levy; Thomas V. Dugas; Vidisha Badhe | 2h | 20.33 |
| 112 | 5.2.2.3 | Re-evaluating the time, cost, scope constraints | 0.1d | 2018-11-27 | 2018-11-27 | 111 | 0d | Angela R. Berry; Javier Pareja; Piro Hernandez; Susan Levy; Thomas V. Dugas; Vidisha Badhe | 3h | 30.5 |
| 113 | 5.2.2.4 | Updating Change control document | 0.2d | 2018-11-27 | 2018-11-27 | 112 | 0d | Vidisha Badhe | 1h | 61 |

| ID | WBS | Task | Duration | Start | Finish | Predecessors | Total slack | Resources | Work | Cost |
| --- | --- | --- | --- | --- | --- | --- | --- | --- | --- | --- |
| 114 | 6 | **Project Implementation** | 196d | 2018-11-27 | 2019-05-17 |  | 0d |  | 1890h | 113,365 |
| 115 | 6.1 | **Database development** | 14d | 2018-11-27 | 2018-12-07 |  | 0d |  | 70h | 2,800 |
| 116 | 6.1.1 | **Sprint 1.1** | 14d | 2018-11-27 | 2018-12-07 |  | 0d |  | 70h | 2,800 |
| 117 | 6.1.1.1 | Conducting database design meetings with Stephanie Lewis for creating the database architecture | 4d | 2018-11-27 | 2018-11-29 | 113 | 0d | Stephanie Lewis | 20h | 800 |
| 118 | 6.1.1.2 | Programming the database logic | 6d | 2018-11-29 | 2018-12-05 | 117 | 0d | Stephanie Lewis | 30h | 1,200 |
| 119 | 6.1.1.3 | Testing the database with the existing customer data | 4d | 2018-12-05 | 2018-12-07 | 118 | 0d | Stephanie Lewis | 20h | 800 |
| 120 | 6.2 | **Accounting System component development** | 42d | 2018-12-07 | 2019-01-16 |  | 0d |  | 420h | 25,515 |
| 121 | 6.2.1 | **Sprint 1.1 - Module 1 development** | 14d | 2018-12-07 | 2018-12-20 |  | 0d |  | 140h | 8,505 |
| 122 | 6.2.1.1 | Designing the system for Module 1 based on the requirements | 2d | 2018-12-07 | 2018-12-11 | 116 | 0d | Mary Garcia; Philip Grome | 20h | 1,215 |
| 123 | 6.2.1.2 | Programming the Accounting System to develop its RPA component | 10d | 2018-12-11 | 2018-12-19 | 122 | 0d | Philip Grome; Mary Garcia | 100h | 6,075 |
| 124 | 6.2.1.3 | Developing the test cases required for Unit testing | 1d | 2018-12-19 | 2018-12-20 | 123 | 0d | Philip Grome; Mary Garcia | 10h | 607.5 |
| 125 | 6.2.1.4 | Testing the Accounting system component | 1d | 2018-12-20 | 2018-12-20 | 124 | 0d | Philip Grome; Mary Garcia | 10h | 607.5 |
| 126 | 6.2.2 | **Sprint 1.2 - Module 2 development** | 14d | 2018-12-20 | 2019-01-03 |  | 0d |  | 140h | 8,505 |
| 127 | 6.2.2.1 | Designing the system for Module 2 based on the requirements | 2d | 2018-12-20 | 2018-12-21 | 121 | 0d | Philip Grome; Mary Garcia | 20h | 1,215 |
| 128 | 6.2.2.2 | Programming the Accounting System to develop its RPA component | 10d | 2018-12-21 | 2019-01-02 | 127 | 0d | Philip Grome; Mary Garcia | 100h | 6,075 |
| 129 | 6.2.2.3 | Developing the test cases required for Unit testing | 1d | 2019-01-02 | 2019-01-02 | 128 | 0d | Philip Grome; Mary Garcia | 10h | 607.5 |
| 130 | 6.2.2.4 | Testing the Accounting system component | 1d | 2019-01-02 | 2019-01-03 | 129 | 0d | Philip Grome; Mary Garcia | 10h | 607.5 |
| 131 | 6.2.3 | **Sprint 1.3 - Module 3 development** | 14d | 2019-01-03 | 2019-01-16 |  | 0d |  | 140h | 8,505 |
| 132 | 6.2.3.1 | Designing the system for Module 3 based on the requirements | 2d | 2019-01-03 | 2019-01-04 | 126 | 0d | Philip Grome; Mary Garcia | 20h | 1,215 |
| 133 | 6.2.3.2 | Programming the Accounting System to develop its RPA component | 10d | 2019-01-04 | 2019-01-14 | 132 | 0d | Philip Grome; Mary Garcia | 100h | 6,075 |
| 134 | 6.2.3.3 | Developing the test cases required for Unit testing | 1d | 2019-01-14 | 2019-01-15 | 133 | 0d | Philip Grome; Mary Garcia | 10h | 607.5 |
| 135 | 6.2.3.4 | Testing the Accounting system component | 1d | 2019-01-15 | 2019-01-16 | 134 | 0d | Philip Grome; Mary Garcia | 10h | 607.5 |
| 136 | 6.3 | **Customer relationship system component development** | 28d | 2019-01-16 | 2019-02-08 |  | 0d |  | 280h | 17,010 |
| 137 | 6.3.1 | **Sprint 2.1 - Module 1** | 14d | 2019-01-16 | 2019-01-28 |  | 0d |  | 140h | 8,505 |
| 138 | 6.3.1.1 | Designing the system for Module 1 based on requirements | 2d | 2019-01-16 | 2019-01-17 | 120 | 0d | Philip Grome; Mary Garcia | 20h | 1,215 |
| 139 | 6.3.1.2 | Programming the Customer relationship System to develop its RPA component | 10d | 2019-01-17 | 2019-01-25 | 138 | 0d | Philip Grome; Mary Garcia | 100h | 6,075 |
| 140 | 6.3.1.3 | Developing the test cases required for Unit testing | 1d | 2019-01-25 | 2019-01-28 | 139 | 0d | Philip Grome; Mary Garcia | 10h | 607.5 |
| 141 | 6.3.1.4 | Testing the Customer relationship system component | 1d | 2019-01-28 | 2019-01-28 | 140 | 0d | Philip Grome; Mary Garcia | 10h | 607.5 |

| ID | WBS | Task | Duration | Start | Finish | Predecessors | Total slack | Resources | Work | Cost |
| --- | --- | --- | --- | --- | --- | --- | --- | --- | --- | --- |
| 142 | 6.3.2 | **Sprint 2.2 - Module 2** | 14d | 2019-01-28 | 2019-02-08 |  | 0d |  | 140h | 8,505 |
| 143 | 6.3.2.1 | Designing the system for Module 2 based on requirements | 2d | 2019-01-28 | 2019-01-30 | 137 | 0d | Philip Grome; Mary Garcia | 20h | 1,215 |
| 144 | 6.3.2.2 | Programming the Customer relationship System to develop its RPA component | 10d | 2019-01-30 | 2019-02-07 | 143 | 0d | Philip Grome; Mary Garcia | 100h | 6,075 |
| 145 | 6.3.2.3 | Developing the test cases required for Unit testing | 1d | 2019-02-07 | 2019-02-08 | 144 | 0d | Philip Grome; Mary Garcia | 10h | 607.5 |
| 146 | 6.3.2.4 | Testing the Customer relationship system component | 1d | 2019-02-08 | 2019-02-08 | 145 | 0d | Philip Grome; Mary Garcia | 10h | 607.5 |
| 147 | 6.4 | **Event Calendar component development** | 28d | 2019-02-08 | 2019-03-06 |  | 0d |  | 280h | 17,010 |
| 148 | 6.4.1 | **Sprint 3.1 - Module 1** | 14d | 2019-02-08 | 2019-02-21 |  | 0d |  | 140h | 8,505 |
| 149 | 6.4.1.1 | Designing the system for Module 1 based on requirements | 2.5d | 2019-02-08 | 2019-02-12 | 136 | 0d | Philip Grome; Mary Garcia | 25h | 1,518.75 |
| 150 | 6.4.1.2 | Programming the Event Calendar System to develop its RPA component | 8.75d | 2019-02-12 | 2019-02-19 | 149 | 0d | Philip Grome; Mary Garcia | 87.5h | 5,315.62 |
| 151 | 6.4.1.3 | Developing the test cases required for Unit testing | 1.9d | 2019-02-19 | 2019-02-20 | 150 | 0d | Philip Grome; Mary Garcia | 19h | 1,154.25 |
| 152 | 6.4.1.4 | Testing the Event Calendar relationship system component | 0.85d | 2019-02-20 | 2019-02-21 | 151 | 0d | Philip Grome; Mary Garcia | 8.5h | 516.38 |
| 153 | 6.4.2 | **Sprint 3.2 - Module 2** | 14d | 2019-02-21 | 2019-03-06 |  | 0d |  | 140h | 8,505 |
| 154 | 6.4.2.1 | Designing the system for Module 2 based on requirements | 2.5d | 2019-02-21 | 2019-02-25 | 148 | 0d | Philip Grome; Mary Garcia | 25h | 1,518.75 |
| 155 | 6.4.2.2 | Programming the Event Calendar relationship System to develop its RPA component | 8.75d | 2019-02-25 | 2019-03-04 | 154 | 0d | Philip Grome; Mary Garcia | 87.5h | 5,315.62 |
| 156 | 6.4.2.3 | Developing the test cases required for Unit testing | 1.9d | 2019-03-04 | 2019-03-05 | 155 | 0d | Philip Grome; Mary Garcia | 19h | 1,154.25 |
| 157 | 6.4.2.4 | Testing the Event Calendar relationship system component | 0.85d | 2019-03-05 | 2019-03-06 | 156 | 0d | Philip Grome; Mary Garcia | 8.5h | 516.38 |
| 158 | 6.5 | **Room reservation system component development** | 56d | 2019-03-06 | 2019-04-24 |  | 0d |  | 560h | 34,020 |
| 159 | 6.5.1 | **Sprint 4.1 - Module 1 development** | 14d | 2019-03-06 | 2019-03-18 |  | 0d |  | 140h | 8,505 |
| 160 | 6.5.1.1 | Designing the system for Module 1 based on the requirements | 2.5d | 2019-03-06 | 2019-03-07 | 147 | 0d | Philip Grome; Mary Garcia | 25h | 1,518.75 |
| 161 | 6.5.1.2 | Programming the room reservation system to develop its RPA component | 8.75d | 2019-03-07 | 2019-03-15 | 160 | 0d | Philip Grome; Mary Garcia | 87.5h | 5,315.62 |
| 162 | 6.5.1.3 | Developing the test cases required for Unit testing | 1.9d | 2019-03-15 | 2019-03-18 | 161 | 0d | Philip Grome; Mary Garcia | 19h | 1,154.25 |
| 163 | 6.5.1.4 | Testing the room reservation system component | 0.85d | 2019-03-18 | 2019-03-18 | 162 | 0d | Philip Grome; Mary Garcia | 8.5h | 516.38 |
| 164 | 6.5.2 | **Sprint 4.2 - Module 2 development** | 14d | 2019-03-18 | 2019-03-29 |  | 0d |  | 140h | 8,505 |
| 165 | 6.5.2.1 | Designing the system for Module 2 based on the requirements | 2.5d | 2019-03-18 | 2019-03-20 | 159 | 0d | Philip Grome; Mary Garcia | 25h | 1,518.75 |
| 166 | 6.5.2.2 | Programming the room reservation system to develop its RPA component | 8.75d | 2019-03-20 | 2019-03-27 | 165 | 0d | Philip Grome; Mary Garcia | 87.5h | 5,315.62 |
| 167 | 6.5.2.3 | Developing the test cases required for Unit testing | 1.9d | 2019-03-27 | 2019-03-29 | 166 | 0d | Philip Grome; Mary Garcia | 19h | 1,154.25 |
| 168 | 6.5.2.4 | Testing the room reservation system component | 0.85d | 2019-03-29 | 2019-03-29 | 167 | 0d | Philip Grome; Mary Garcia | 8.5h | 516.38 |

| ID | WBS | Task | Duration | Start | Finish | Predecessors | Total slack | Resources | Work | Cost |
| --- | --- | --- | --- | --- | --- | --- | --- | --- | --- | --- |
| 169 | 6.5.3 | **Sprint 4.3 - Module 3 development** | 14d | 2019-03-29 | 2019-04-11 |  | 0d |  | 140h | 8,505 |
| 170 | 6.5.3.1 | Designing the system for Module 3 based on the requirements | 2.5d | 2019-03-29 | 2019-04-02 | 164 | 0d | Philip Grome; Mary Garcia | 25h | 1,518.75 |
| 171 | 6.5.3.2 | Programming the room reservation system to develop its RPA component | 8.75d | 2019-04-02 | 2019-04-09 | 170 | 0d | Philip Grome; Mary Garcia | 87.5h | 5,315.62 |
| 172 | 6.5.3.3 | Developing the test cases required for Unit testing | 1.9d | 2019-04-09 | 2019-04-10 | 171 | 0d | Philip Grome; Mary Garcia | 19h | 1,154.25 |
| 173 | 6.5.3.4 | Testing the reservation system component | 0.85d | 2019-04-10 | 2019-04-11 | 172 | 0d | Philip Grome; Mary Garcia | 8.5h | 516.38 |
| 174 | 6.5.4 | **Sprint 4.4 - Module 3 development** | 14d | 2019-04-11 | 2019-04-24 |  | 0d |  | 140h | 8,505 |
| 175 | 6.5.4.1 | Designing the system for Module 4 based on the requirements | 2.5d | 2019-04-11 | 2019-04-15 | 169 | 0d | Philip Grome; Mary Garcia | 25h | 1,518.75 |
| 176 | 6.5.4.2 | Programming the room reservation system to develop its RPA component | 8.75d | 2019-04-15 | 2019-04-22 | 175 | 0d | Philip Grome; Mary Garcia | 87.5h | 5,315.62 |
| 177 | 6.5.4.3 | Developing the test cases required for Unit testing | 1.9d | 2019-04-22 | 2019-04-23 | 176 | 0d | Philip Grome; Mary Garcia | 19h | 1,154.25 |
| 178 | 6.5.4.4 | Testing the reservation system component | 0.85d | 2019-04-23 | 2019-04-24 | 177 | 0d | Philip Grome; Mary Garcia | 8.5h | 516.38 |
| 179 | 6.6 | **Loyalty Points System development** | 28d | 2019-04-24 | 2019-05-17 |  | 0d |  | 280h | 17,010 |
| 180 | 6.6.1 | **Sprint 5.1 - Module 1 development** | 14d | 2019-04-24 | 2019-05-06 |  | 0d |  | 140h | 8,505 |
| 181 | 6.6.1.1 | Designing the system for Module 1 based on the requirements | 2.5d | 2019-04-24 | 2019-04-25 | 158 | 0d | Philip Grome; Mary Garcia | 25h | 1,518.75 |
| 182 | 6.6.1.2 | Programming the loyalty points system to develop its RPA component | 8d | 2019-04-25 | 2019-05-02 | 181 | 0d | Philip Grome; Mary Garcia | 80h | 4,860 |
| 183 | 6.6.1.3 | Developing the test cases required for Unit testing | 1.8d | 2019-05-02 | 2019-05-03 | 182 | 0d | Philip Grome; Mary Garcia | 18h | 1,093.5 |
| 184 | 6.6.1.4 | Testing the loyalty points system component | 1.7d | 2019-05-03 | 2019-05-06 | 183 | 0d | Philip Grome; Mary Garcia | 17h | 1,032.75 |
| 185 | 6.6.2 | **Sprint 5.2 - Module 2 development** | 14d | 2019-05-06 | 2019-05-17 |  | 0d |  | 140h | 8,505 |
| 186 | 6.6.2.1 | Designing the system for Module 2 based on the requirements | 2.5d | 2019-05-06 | 2019-05-08 | 180 | 0d | Philip Grome; Mary Garcia | 25h | 1,518.75 |
| 187 | 6.6.2.2 | Programming the loyalty points system to develop its RPA component | 7d | 2019-05-08 | 2019-05-14 | 186 | 0d | Philip Grome; Mary Garcia | 70h | 4,252.5 |
| 188 | 6.6.2.3 | Developing the test cases required for Unit testing | 2.3d | 2019-05-14 | 2019-05-16 | 187 | 0d | Philip Grome; Mary Garcia | 23h | 1,397.25 |
| 189 | 6.6.2.4 | Testing the loyalty points system component | 2.2d | 2019-05-16 | 2019-05-17 | 188 | 0d | Philip Grome; Mary Garcia | 22h | 1,336.5 |
| 190 | 7 | **Component Testing** | 12.1d | 2019-05-17 | 2019-05-29 |  | 0d |  | 88h | 5,345.75 |
| 191 | 7.1 | **Integration of components** | 4d | 2019-05-17 | 2019-05-22 |  | 0d |  | 35h | 2,145 |
| 192 | 7.1.1 | Deploying the components in the World Hotels computer systems | 2d | 2019-05-17 | 2019-05-20 | 185 | 0d | Philip Grome | 10h | 625 |
| 193 | 7.1.2 | Discussing the constraints required for the integration of the modules with Blue Prism team | 1d | 2019-05-20 | 2019-05-21 | 192 | 32.21d | Vidisha Badhe | 5h | 305 |
| 194 | 7.1.3 | Integrating the individual components to form Event Management System | 2d | 2019-05-20 | 2019-05-22 | 192 | 0d | Mary Garcia; Philip Grome | 20h | 1,215 |
| 195 | 7.2 | Performing Integration testing of the Event management system | 2.5d | 2019-05-22 | 2019-05-23 | 194 | 0d | Mary Garcia; Philip Grome | 25h | 1,518.75 |
| 196 | 7.3 | Documenting the results of integration testing | 0.6d | 2019-05-23 | 2019-05-24 | 195 | 0d | Mary Garcia | 3h | 177 |

| ID | WBS | Task | Duration | Start | Finish | Predecessors | Total slack | Free slack | Resources | Work | Cost |
| --- | --- | --- | --- | --- | --- | --- | --- | --- | --- | --- | --- |
| 197 | 7.4 | **User Acceptance testing** | 5d | 2019-05-24 | 2019-05-29 |  | 23.11d |  |  | 25h | 1,505 |
| 198 | 7.4.1 | Identifying a close goup of customers for testing | 1d | 2019-05-24 | 2019-05-24 | 196 | 23.11d | 0d | Vidisha Badhe | 5h | 305 |
| 199 | 7.4.2 | Allowing the customers to use the system in different scenarios | 2d | 2019-05-24 | 2019-05-28 | 198 | 23.11d | 0d | Vidisha Badhe | 10h | 610 |
| 200 | 7.4.3 | Documenting the results of user acceptance testing | 1.2d | 2019-05-28 | 2019-05-28 | 199 | 23.11d | 0d | Mary Garcia | 6h | 354 |
| 201 | 7.4.4 | Deliverable: Creating an overall Test Report | 0.8d | 2019-05-28 | 2019-05-29 | 200 | 23.11d |  | Mary Garcia | 4h | 236 |
| 202 | 8 | Second contract payment to Blue Prism | 0.2d | 2019-05-24 | 2019-05-24 | 196 | 0d |  | Second Contract Payment |  | 12,500 |
| 203 | 9 | **System Training** | 17.2d | 2019-05-24 | 2019-06-10 |  | 0d |  |  | 86h | 3,870 |
| 204 | 9.1 | **Developing the Training materials** | 8.8d | 2019-05-24 | 2019-05-31 |  | 0d |  |  | 44h | 1,980 |
| 205 | 9.1.1 | Identifying the necessary modules for the Event Management system | 4d | 2019-05-24 | 2019-05-28 | 202 | 0d |  | Robert T. Murray | 20h | 900 |
| 206 | 9.1.2 | Designing the syllabus | 3d | 2019-05-28 | 2019-05-30 | 205 | 0d |  | Robert T. Murray | 15h | 675 |
| 207 | 9.1.3 | Creating the Training document | 1.8d | 2019-05-30 | 2019-05-31 | 206 | 0d |  | Robert T. Murray | 9h | 405 |
| 208 | 9.2 | Developing training sessions respective to each module in colaboration with Blue Prism | 2.6d | 2019-05-31 | 2019-06-04 | 204 | 0d |  | Robert T. Murray | 13h | 585 |
| 209 | 9.3 | **System Training classes** | 5.8d | 2019-06-04 | 2019-06-10 |  | 0d |  |  | 29h | 1,305 |
| 210 | 9.3.1 | Preparing the schedule for the classes | 2.8d | 2019-06-04 | 2019-06-06 | 208 | 0d |  | Robert T. Murray | 14h | 630 |
| 211 | 9.3.2 | Training the staff of World Hotels | 3d | 2019-06-06 | 2019-06-10 | 210 | 0d |  | Robert T. Murray | 15h | 675 |
| 212 | 10 | Third contract payment to Blue Prism | 0.2d | 2019-06-10 | 2019-06-10 | 209 | 0d |  | Third Contract Payment |  | 17,000 |
| 213 | 11 | **Production Testing - Prototyping in Royal Park Hotel, Detroit** | 306.5d | 2018-09-11 | 2019-06-13 |  | 0d |  |  | 52h | 1,845.5 |
| 214 | 11.1 | **Meeting with Nikki Platenik** | 302.43d | 2018-09-11 | 2019-06-11 |  | 0d |  |  | 11h | 589.67 |
| 215 | 11.1.1 | Discussing the schedule for the implementation of Event Management system prototype | 1.6d | 2019-06-10 | 2019-06-11 | 212 | 0d |  | Vidisha Badhe | 8h | 488 |
| 216 | 11.1.2 | Informing the Hotel staff & Executives regarding the implementation | 0.2d | 2019-06-11 | 2019-06-11 | 215 | 0d |  | Nikki Platenik | 1h |  |
| 217 | 11.1.3 | Announcing the downtime for implementation | 0.33d | 2018-09-11 | 2018-09-11 |  | 302.1d |  | Nikki Platenik; Vidisha Badhe | 2h | 101.67 |
| 218 | 11.2 | Simulation of the Event management System in Royal Park Hotel | 2.07d | 2019-06-11 | 2019-06-12 | 214 | 0d |  | Cynthia Wong; Philip Grome; Piro Hernandez | 31h | 645.83 |
| 219 | 11.3 | Deliverable: Preparing a Project Prototype report with all the observations | 2d | 2019-06-12 | 2019-06-13 | 218 | 0d |  | Vidisha Badhe | 10h | 610 |
| 220 | 12 | Final contract payment to Blue Prism | 0.2d | 2019-06-13 | 2019-06-13 | 219 | 4.44d |  | Final Contract Payment |  | 32,500 |
| 221 | 13 | Project Go-Live | 0.1d | 2019-06-13 | 2019-06-13 | 213 | 0d |  | Javier Pareja; Piro Hernandez; Susan Levy; Vidisha Badhe | 2h | 30.5 |

| ID | WBS | Task | Duration | Start | Finish | Predecessors | Total slack | Constraint | Resources | Work | Cost |
| --- | --- | --- | --- | --- | --- | --- | --- | --- | --- | --- | --- |
| 222 | 14 | **Project Close-out** | 4.54d | 2019-06-13 | 2019-06-18 |  | 0d |  |  | 52h | 1,717.45 |
| 223 | 14.1 | Ensuring deliverables are delivered | 2.8d | 2019-06-13 | 2019-06-17 | 221 | 0d |  | Vidisha Badhe | 14h | 854 |
| 224 | 14.2 | Creating archives for official files | 1.1d | 2019-06-13 | 2019-06-14 | 221 | 1.7d |  | Mary Garcia; Philip Grome | 11h | 668.25 |
| 225 | 14.3 | Closing contract and legal obligations with Blue Prism | 0.64d | 2019-06-17 | 2019-06-18 | 223, 224 | 0d |  | Angela R. Berry; Javier Pareja; Piro Hernandez; Susan Levy; Vidisha Badhe | 16h | 195.2 |
| 226 | 14.4 | Planning for support and Maintenance | 1.1d | 2019-06-18 | 2019-06-18 | 225 | 0d |  | Javier Pareja; Susan Levy | 11h |  |
| 227 | 15 | **Monthly Licence payment to Blue Prism** | 138.2d | 2019-02-01 | 2019-06-03 |  | 17.74d |  |  |  | 11,500 |
| 228 | 15.1 | Monthly Licence payment to Blue Prism 1 | 1d | 2019-02-01 | 2019-02-01 |  | 154.94d | start no earlier than 2019-02-01 | Monthly Licence fees |  | 2,300 |
| 229 | 15.2 | Monthly Licence payment to Blue Prism 2 | 1d | 2019-03-01 | 2019-03-01 |  | 122.94d | start no earlier than 2019-03-01 | Monthly Licence fees |  | 2,300 |
| 230 | 15.3 | Monthly Licence payment to Blue Prism 3 | 1d | 2019-04-01 | 2019-04-01 |  | 89.34d | start no earlier than 2019-04-01 | Monthly Licence fees |  | 2,300 |
| 231 | 15.4 | Monthly Licence payment to Blue Prism 4 | 1d | 2019-05-01 | 2019-05-01 |  | 54.14d | start no earlier than 2019-05-01 | Monthly Licence fees |  | 2,300 |
| 232 | 15.5 | Monthly Licence payment to Blue Prism 5 | 1d | 2019-06-03 | 2019-06-03 |  | 17.74d | start no earlier than 2019-06-01 | Monthly Licence fees |  | 2,300 |
